Task ID,Section,Description,Owner,Dependencies,Pre-requisites,Definition of Done,Status,KPIs,Target Sprint,Artifacts To Track,Validation Method,Estimate (O/M/P),Planned Start,Planned Finish,Percent Complete,Dependency Types,Cadence
IFC-296,AI Foundation,"Queue Scheduler Administration — Implement queuesAdmin tRPC router with live BullMQ stats and scheduler CRUD (list/pause/resume/retry/delete), wire to /agent-approvals/agents page. Replace stub router with live Redis/BullMQ data. Add queue health panel to ActiveAgentsDashboard showing scheduler cron patterns, queue counts, and action buttons.",Backend Dev + Frontend Dev (STOA-Domain),"IFC-015,IFC-197,PG-151",FILE:apps/api/src/modules/admin/queues.router.ts;FILE:apps/web/src/components/ai-monitoring/ActiveAgentsDashboard.tsx;FILE:packages/platform/src/queues/queue-factory.ts;ENV:Redis running;ENV:BullMQ configured,"queuesAdmin router returns live queue stats from Redis; scheduler list/pause/resume/retry/delete endpoints functional; ActiveAgentsDashboard displays queue health panel with cron patterns and action buttons; stub router fully replaced; artifacts: queues.router.ts, QueueSchedulerPanel.tsx; targets: response <200ms, coverage >90%; verified by: pnpm test",Completed,"Coverage >90%, API response <200ms, All 3 queues visible, Scheduler CRUD functional",15,ARTIFACT:apps/api/src/modules/admin/queues.router.ts;ARTIFACT:apps/web/src/components/ai-monitoring/QueueSchedulerPanel.tsx;ARTIFACT:apps/web/src/lib/ai-monitoring/queue-scheduler-hooks.ts;EVIDENCE:.specify/sprints/sprint-15/attestations/IFC-296/attestation.json;SPEC:.specify/sprints/sprint-15/specifications/IFC-296-spec.md;PLAN:.specify/sprints/sprint-15/planning/IFC-296-plan.md;EVIDENCE:.specify/sprints/sprint-15/attestations/IFC-296/attestation.json,VALIDATE:pnpm typecheck;VALIDATE:pnpm test;VALIDATE:pnpm lint;VALIDATE:pnpm build,120/240/480,2026-03-08,2026-03-08,100,"IFC-015:FS,IFC-197:FS,PG-151:FS",
IFC-297,AI Foundation,"AI Monitoring Data Persistence — Replace in-memory singleton monitoring data (driftDetector, latencyMonitor, hallucinationChecker, roiTracker) with DB-backed persistence via new AIMonitoringEvent model. Add ai-worker flush service to write metrics to DB periodically. Rewrite monitoring router to query DB instead of in-process singletons. Enables multi-process deployments to share monitoring data.",Backend Dev (STOA-Domain),"IFC-015,IFC-025",FILE:apps/api/src/modules/ai-monitoring/ai-monitoring.router.ts;FILE:apps/ai-worker/src/monitoring/index.ts;FILE:packages/db/prisma/schema.prisma;ENV:PostgreSQL running,"AIMonitoringEvent Prisma model created with migration; ai-worker flushes metrics to DB every 60s; monitoring router queries DB; drift/latency/ROI dashboards show real data in multi-process mode; targets: flush latency <100ms, coverage >90%; verified by: pnpm test",Completed,"Coverage >90%, Flush latency <100ms, Multi-process data visible",16,ARTIFACT:packages/db/prisma/migrations/*_ai_monitoring_events;ARTIFACT:apps/ai-worker/src/monitoring/monitoring-flush.service.ts;ARTIFACT:apps/api/src/modules/ai-monitoring/ai-monitoring.router.ts,VALIDATE:pnpm typecheck;VALIDATE:pnpm test;VALIDATE:pnpm lint;VALIDATE:pnpm build,180/360/720,2026-03-15,2026-03-16,100,"IFC-015:FS,IFC-025:FS",
IFC-298,Support,HelpArticle Prisma Model + Migration,Backend Dev (STOA-Domain),PG-045,FILE:packages/db/prisma/schema.prisma;FILE:apps/web/src/lib/support/help-articles.ts;FILE:docs/planning/prd-support-help-center.md,"HelpArticle, ArticleSection, ArticleFeedback Prisma models; migration applied; fields match HelpArticle TS interface; status enum (draft/published); verified by: pnpm test",Completed,3 models + 1 enum + migration + 14 tests; all 4 validations pass,17,ARTIFACT:packages/db/prisma/schema.prisma;EVIDENCE:.specify/sprints/sprint-17/attestations/IFC-298/attestation.json;EVIDENCE:.specify/sprints/sprint-17/attestations/IFC-298/attestation.json;SPEC:.specify/sprints/sprint-17/specifications/IFC-298-spec.md;PLAN:.specify/sprints/sprint-17/planning/IFC-298-plan.md,VALIDATE:pnpm --filter @intelliflow/db typecheck;VALIDATE:pnpm test,60/120/240,2026-03-10,2026-03-10,100,PG-045:FS,
IFC-299,Support,Help Article CRUD tRPC Router,Backend Dev (STOA-Domain),IFC-298,FILE:packages/db/prisma/schema.prisma;FILE:apps/api/src/router.ts;FILE:docs/planning/prd-support-help-center.md,helpArticle tRPC router with list/getBySlug/getByCategory/getRelated/create/update/delete/publish/unpublish; tenant-scoped; coverage >=90%; verified by: pnpm test,Completed,"9 procedures, 49 tests, coverage 91%/80%/100%/95%",17,ARTIFACT:apps/api/src/modules/help-article/help-article.router.ts;ARTIFACT:packages/validators/src/help-article.ts;EVIDENCE:.specify/sprints/sprint-17/attestations/IFC-299/attestation.json;EVIDENCE:.specify/sprints/sprint-17/attestations/IFC-299/attestation.json;SPEC:.specify/sprints/sprint-17/specifications/IFC-299-spec.md;PLAN:.specify/sprints/sprint-17/planning/IFC-299-plan.md,VALIDATE:pnpm --filter @intelliflow/api typecheck;VALIDATE:pnpm test;GATE:coverage-gte-90,90/180/360,2026-03-18,2026-03-19,100,IFC-298:FS,
IFC-300,Support,Help Article Seed Script — Static to DB Migration,Backend Dev (STOA-Foundation),IFC-298,FILE:packages/db/prisma/schema.prisma;FILE:apps/web/src/lib/support/help-articles.ts,Seed script migrates DEFAULT_HELP_ARTICLES into DB; idempotent (skip existing slugs); validates data integrity post-seed; verified by: pnpm test,Completed,"17 articles seeded, idempotent re-run passes; coverage 100%/90%/100%/100%; 11 tests pass",17,ARTIFACT:packages/db/prisma/seed-help-articles.ts;ARTIFACT:packages/db/prisma/seed-help-articles.cli.ts;ARTIFACT:packages/db/prisma/data/help-articles.snapshot.json;EVIDENCE:.specify/sprints/sprint-17/attestations/IFC-300/attestation.json;EVIDENCE:.specify/sprints/sprint-17/attestations/IFC-300/attestation.json;SPEC:.specify/sprints/sprint-17/specifications/IFC-300-spec.md;PLAN:.specify/sprints/sprint-17/planning/IFC-300-plan.md,VALIDATE:pnpm --filter @intelliflow/db typecheck;VALIDATE:pnpm test,60/120/240,2026-04-13,2026-04-13,100,IFC-298:FS,2026-04-14
IFC-303,Support,Article Feedback tRPC Mutation,Backend Dev (STOA-Domain),IFC-298,FILE:packages/db/prisma/schema.prisma;FILE:apps/web/src/components/support/feedback-widget.tsx,helpArticle.submitFeedback mutation stores feedback in ArticleFeedback table; FeedbackWidget onFeedback wired to tRPC; analytics aggregation; coverage >=90%; verified by: pnpm test,Completed,Stmts 91.45% Branch 80.48% Funcs 100% Lines 95.45%; 59 router + 17 widget tests pass,17,ARTIFACT:apps/api/src/modules/help-article/help-article.router.ts;EVIDENCE:.specify/sprints/sprint-17/attestations/IFC-303/attestation.json;EVIDENCE:.specify/sprints/sprint-17/attestations/IFC-303/attestation.json;SPEC:.specify/sprints/sprint-17/specifications/IFC-303-spec.md;PLAN:.specify/sprints/sprint-17/planning/IFC-303-plan.md,VALIDATE:pnpm --filter @intelliflow/api typecheck;VALIDATE:pnpm test;GATE:coverage-gte-90,60/120/240,2026-03-18,2026-03-19,100,IFC-298:FS,
PG-180,Support Pages,Help Article Admin List Page,Support Eng (STOA-Domain),IFC-299,FILE:apps/api/src/modules/help-article/help-article.router.ts;FILE:docs/planning/prd-support-help-center.md;DESIGN:docs/design/README.md,"Response <200ms, Lighthouse >=90; admin page at /settings/help-center/articles with article list, status badges, category filters, search, CRUD actions; verified by: pnpm test",Completed,"Articles listed, filters working, CRUD actions functional; coverage 97.26/95.06/91.66/96.96 (S/B/F/L)",18,ARTIFACT:apps/web/src/app/settings/help-center/articles/page.tsx;ARTIFACT:apps/web/src/components/support/article-admin-list.tsx;EVIDENCE:.specify/sprints/sprint-18/attestations/PG-180/attestation.json;EVIDENCE:.specify/sprints/sprint-18/attestations/PG-180/attestation.json;SPEC:.specify/sprints/sprint-18/specifications/PG-180-spec.md;PLAN:.specify/sprints/sprint-18/planning/PG-180-plan.md,GATE:lighthouse-gte-90;VALIDATE:pnpm --filter @intelliflow/web typecheck;VALIDATE:pnpm --filter @intelliflow/web test --run,90/180/360,2026-04-19,2026-04-19,100,IFC-299:FS,
IFC-301,Infrastructure,Rich Text Editor Integration — Tiptap,Frontend Dev (STOA-Foundation),PG-180,FILE:packages/ui/src/index.ts;FILE:docs/planning/prd-support-help-center.md,Tiptap editor as reusable @intelliflow/ui component; headings/bold/italic/lists/links/images/code blocks; exports structured sections; coverage >=90%; verified by: pnpm test,Completed,"Editor renders, all formatting works, structured output correct",18,ARTIFACT:packages/ui/src/components/rich-text-editor.tsx;ARTIFACT:packages/ui/__tests__/rich-text-editor.test.tsx;EVIDENCE:.specify/sprints/sprint-18/attestations/IFC-301/context_ack.json,VALIDATE:pnpm --filter @intelliflow/ui typecheck;VALIDATE:pnpm test;GATE:coverage-gte-90,120/240/480,2026-06-15,2026-06-15,100,PG-180:FS,
PG-181,Support Pages,Help Article Editor Page,Support Eng (STOA-Domain),"PG-180,IFC-301",FILE:apps/web/src/app/settings/help-center/articles/page.tsx;FILE:packages/ui/src/components/rich-text-editor.tsx;DESIGN:docs/design/README.md,"Response <200ms, Lighthouse >=90; editor at /settings/help-center/articles/[id]/edit and /new; Tiptap editor, metadata fields, preview, save draft, publish; verified by: pnpm test",Completed,"Articles editable, preview works, draft/publish functional",18,ARTIFACT:apps/web/src/app/settings/help-center/articles/[id]/edit/page.tsx;ARTIFACT:apps/web/src/app/settings/help-center/articles/new/page.tsx;EVIDENCE:.specify/sprints/sprint-18/attestations/PG-181/context_ack.json,GATE:lighthouse-gte-90;VALIDATE:pnpm --filter @intelliflow/web typecheck;VALIDATE:pnpm --filter @intelliflow/web test --run,90/180/360,,,0,"PG-180:FS,IFC-301:FS",
IFC-302,Support,Refactor Help Article Page to Use Database,Support Eng (STOA-Domain),IFC-299,FILE:apps/web/src/app/help-center/[article]/page.tsx;FILE:apps/api/src/modules/help-article/help-article.router.ts,"Replace static DEFAULT_HELP_ARTICLES in [article]/page.tsx with tRPC queries; same UI, DB data source; static dependency removed; all tests passing; verified by: pnpm test",Completed,"Page renders from DB, no static imports, tests passing",18,ARTIFACT:apps/web/src/app/help-center/[article]/page.tsx;EVIDENCE:.specify/sprints/sprint-18/attestations/IFC-302/context_ack.json,VALIDATE:pnpm --filter @intelliflow/web typecheck;VALIDATE:pnpm --filter @intelliflow/web test --run,60/120/240,2026-06-27,2026-06-28,100,IFC-299:FS,
IFC-304,Support,Article Analytics Dashboard,Support Eng (STOA-Domain),"IFC-303,PG-180",FILE:apps/api/src/modules/help-article/help-article.router.ts;FILE:apps/web/src/app/settings/help-center/articles/page.tsx,"Analytics in help article admin; views, feedback stats, most/least helpful, search terms; helpArticle.getAnalytics tRPC; coverage >=90%; verified by: pnpm test",Completed,"Analytics render, data accurate, coverage >=90%",19,ARTIFACT:apps/web/src/components/support/article-analytics.tsx;ARTIFACT:apps/api/src/modules/help-article/help-article.router.ts;EVIDENCE:.specify/sprints/sprint-19/attestations/IFC-304/context_ack.json,VALIDATE:pnpm --filter @intelliflow/web typecheck;VALIDATE:pnpm test;GATE:coverage-gte-90,90/180/360,,,0,"IFC-303:FS,PG-180:FS",
PG-182,Settings,Module Settings - Contacts (/contacts/contact-settings),Frontend Dev (STOA-Foundation),PG-178,FILE:apps/web/src/components/sidebar/configs/contacts.ts;FILE:apps/web/src/components/contacts/ContactSettingsSidebarNav.tsx,"Contact settings page at /contacts/contact-settings with duplicate detection, required fields, tags config; uses in-module settings sidebar pattern; Lighthouse >=90; verified by: pnpm test",Completed,All form fields render and save; sidebar settings nav works; Lighthouse >=90,17,ARTIFACT:apps/web/src/app/contacts/(list)/contact-settings/page.tsx;SPEC:.specify/sprints/sprint-17/specifications/PG-182-spec.md;PLAN:.specify/sprints/sprint-17/planning/PG-182-plan.md;EVIDENCE:.specify/sprints/sprint-17/attestations/PG-182/attestation.json;EVIDENCE:.specify/sprints/sprint-17/attestations/PG-182/attestation.json,VALIDATE:pnpm test,120/240/480,2026-04-13,2026-04-15,100,PG-178:FS,
PG-183,Settings,Module Settings - Accounts (/accounts/account-settings),Frontend Dev (STOA-Foundation),PG-178,FILE:apps/web/src/components/sidebar/configs/accounts.ts;FILE:apps/web/src/components/accounts/AccountSettingsSidebarNav.tsx,"Account settings page at /accounts/account-settings with 8 sections: hierarchy, industry taxonomy, custom fields, duplicate detection, required fields, automation, AI & intelligence, tags; bento grid layout matching /contacts/contact-settings; uses in-module settings sidebar pattern; Lighthouse >=90; verified by: pnpm test",Completed,All form fields render and save; sidebar settings nav works; Lighthouse >=90,17,ARTIFACT:apps/web/src/app/accounts/(list)/account-settings/page.tsx,VALIDATE:pnpm test,120/240/480,2026-04-13,2026-04-15,100,PG-178:FS,SPEC:.specify/sprints/sprint-17/specifications/PG-183-spec.md;PLAN:.specify/sprints/sprint-17/planning/PG-183-plan.md;EVIDENCE:.specify/sprints/sprint-17/attestations/PG-183/attestation.json
PG-184,Settings,Module Settings - Deals (/deals/deal-settings),Frontend Dev (STOA-Foundation),"PG-178,PG-182,PG-183",FILE:apps/web/src/components/sidebar/configs/deals.ts;FILE:apps/web/src/components/deals/DealSettingsSidebarNav.tsx;FILE:docs/planning/module-settings-playbook.md;FILE:apps/web/src/app/accounts/(list)/account-settings/AccountSettingsContent.tsx;FILE:apps/api/src/modules/account/account-automation.ts;FILE:apps/api/src/modules/contact/contact-automation.ts,"Deal settings at /deals/deal-settings (pipeline stages, win-loss reasons, scoring). MUST follow docs/planning/module-settings-playbook.md: PageHeader+bento grid (NOT ModuleSettingsLayout); canonical EmptyState (entity + phase=passive); Add Rule button = <Button size='sm'>Add Rule</Button> right-aligned, no icon no outline; TagsTab via forwardRef+useImperativeHandle; wrap ALL destructive writes in $transaction; drop skipDuplicates; Zod superRefine for duplicate (field,strategy); colorToken CHECK constraint; AI defaults FALSE; wire every Boolean toggle in deal-automation.ts (mirror contact-automation.ts) OR declare each as category-2 follow-up under IFC-310/311/312; include cross-tenant negative test; Lighthouse >=90; verified by: pnpm test",Completed,All 4 validations pass; every toggle has runtime consumer or IFC-* follow-up; EmptyState uses project SVG; Add Rule button matches system design; cross-tenant negative test; Lighthouse >=90,17,ARTIFACT:apps/web/src/app/deals/deal-settings/page.tsx;ARTIFACT:apps/api/src/modules/opportunity/deal-settings.router.ts;ARTIFACT:apps/api/src/modules/opportunity/deal-automation.ts;ARTIFACT:packages/validators/src/deal-settings.ts,VALIDATE:pnpm typecheck;VALIDATE:pnpm test --run;VALIDATE:pnpm lint;VALIDATE:pnpm build;GATE:lighthouse-gte-90,180/360/540,2026-04-15,,100,"PG-178:FS,PG-182:FS,PG-183:FS",
PG-185,Settings,Module Settings - Tickets (/tickets/sla-policies),Frontend Dev (STOA-Foundation),"PG-178,PG-182,PG-183",FILE:apps/web/src/components/sidebar/configs/tickets.ts;FILE:apps/web/src/components/tickets/TicketSettingsSidebarNav.tsx;FILE:docs/planning/module-settings-playbook.md;FILE:apps/web/src/app/accounts/(list)/account-settings/AccountSettingsContent.tsx;FILE:apps/api/src/modules/account/account-automation.ts;FILE:apps/api/src/modules/contact/contact-automation.ts,"Ticket settings at /tickets/sla-policies (default SLA, auto-close, notification triggers). MUST follow docs/planning/module-settings-playbook.md: PageHeader+bento grid; canonical EmptyState (entity + phase=passive); Add Rule button system-compliant; TagsTab via forwardRef; $transaction on all destructive writes; no skipDuplicates; Zod superRefine for duplicate (field,strategy); colorToken CHECK constraint; AI defaults FALSE; wire every Boolean toggle in ticket-automation.ts (mirror contact-automation.ts) OR declare each as category-2 follow-up under IFC-310/311/312; include cross-tenant negative test; Lighthouse >=90; verified by: pnpm test",Completed,All 4 validations pass; every toggle has runtime consumer or IFC-* follow-up; EmptyState uses project SVG; Add Rule button matches system design; cross-tenant negative test; Lighthouse >=90,17,ARTIFACT:apps/web/src/app/tickets/(list)/sla-policies/page.tsx;ARTIFACT:apps/api/src/modules/ticket/ticket-settings.router.ts;ARTIFACT:apps/api/src/modules/ticket/ticket-automation.ts;ARTIFACT:packages/validators/src/ticket-settings.ts,VALIDATE:pnpm typecheck;VALIDATE:pnpm test --run;VALIDATE:pnpm lint;VALIDATE:pnpm build;GATE:lighthouse-gte-90,180/360/540,2026-04-15,2026-04-17,100,"PG-178:FS,PG-182:FS,PG-183:FS",
PG-186,Settings,Module Settings - Documents (/documents/document-settings),Frontend Dev (STOA-Foundation),"PG-178,PG-182,PG-183",FILE:apps/web/src/components/sidebar/configs/documents.ts;FILE:apps/web/src/components/documents/DocumentSettingsSidebarNav.tsx;FILE:docs/planning/module-settings-playbook.md;FILE:apps/web/src/app/accounts/(list)/account-settings/AccountSettingsContent.tsx;FILE:apps/api/src/modules/account/account-automation.ts;FILE:apps/api/src/modules/contact/contact-automation.ts,"Document settings at /documents/document-settings (file types, size limits, antivirus, retention). MUST follow docs/planning/module-settings-playbook.md: PageHeader+bento grid; canonical EmptyState (entity + phase=passive); Add Rule button system-compliant; TagsTab via forwardRef; $transaction on all destructive writes; no skipDuplicates; Zod superRefine for duplicate (field,strategy); colorToken CHECK constraint; AI defaults FALSE; wire every Boolean toggle in document-automation.ts (mirror contact-automation.ts) OR declare each as category-2 follow-up under IFC-310/311/312; include cross-tenant negative test; Lighthouse >=90; verified by: pnpm test",Completed,All 4 validations pass; every toggle has runtime consumer or IFC-* follow-up; EmptyState uses project SVG; Add Rule button matches system design; cross-tenant negative test; Lighthouse >=90,17,ARTIFACT:apps/web/src/app/documents/(list)/document-settings/page.tsx;ARTIFACT:apps/web/src/app/documents/(list)/document-settings/DocumentSettingsContent.tsx;ARTIFACT:apps/api/src/modules/legal/document-settings.router.ts;ARTIFACT:apps/api/src/modules/legal/document-automation.ts;ARTIFACT:packages/validators/src/document-settings.ts,VALIDATE:pnpm typecheck;VALIDATE:pnpm test --run;VALIDATE:pnpm lint;VALIDATE:pnpm build;GATE:lighthouse-gte-90,180/360/540,2026-04-15,2026-04-16,100,"PG-178:FS,PG-182:FS,PG-183:FS",
PG-187,Settings,Module Settings - Reports (/analytics/report-settings),Frontend Dev (STOA-Foundation),PG-178,FILE:apps/web/src/components/settings/ModuleSettingsLayout.tsx,"Report settings page at /analytics/report-settings with default range, currency, scheduled delivery config; uses in-module settings sidebar pattern; Lighthouse >=90; verified by: pnpm test",Completed,All form fields render and save; sidebar settings nav works; Lighthouse >=90,18,ARTIFACT:apps/web/src/app/analytics/(list)/report-settings/page.tsx,VALIDATE:pnpm test,120/240/480,2026-04-19,2026-04-19,100,PG-178:FS,
PG-188,Settings,Module Settings - Billing (/billing/settings),Frontend Dev (STOA-Foundation),PG-178,FILE:apps/web/src/components/settings/ModuleSettingsLayout.tsx,"Billing settings page at /billing/settings with billing address, tax ID, invoice contact config; uses in-module settings sidebar pattern; Lighthouse >=90; verified by: pnpm test",Exec,All form fields render and save; sidebar settings nav works; Lighthouse >=90,18,ARTIFACT:apps/web/src/app/billing/settings/page.tsx;SPEC:.specify/sprints/sprint-18/specifications/PG-188-spec.md,VALIDATE:pnpm test,120/240/480,2026-06-29,,60,PG-178:FS,
PG-189,Settings,Module Settings - Appointments (/calendar/calendar-settings),Frontend Dev (STOA-Foundation),PG-178,FILE:apps/web/src/components/sidebar/configs/appointments.ts;FILE:apps/web/src/components/calendar/CalendarSettingsSidebarNav.tsx,"Appointment settings page at /calendar/calendar-settings with duration, buffer, calendar integration config; uses in-module settings sidebar pattern; Lighthouse >=90; verified by: pnpm test",Completed,All form fields render and save; sidebar settings nav works; Lighthouse >=90,18,ARTIFACT:apps/web/src/app/calendar/calendar-settings/page.tsx;SPEC:.specify/sprints/sprint-18/specifications/PG-189-spec.md;PLAN:.specify/sprints/sprint-18/planning/PG-189-plan.md;EVIDENCE:.specify/sprints/sprint-18/attestations/PG-189/attestation.json;DELIVERY:.specify/sprints/sprint-18/execution/PG-189/exec-20260419T144000Z/PG-189-delivery.md,VALIDATE:pnpm test,120/240/480,2026-04-19,2026-04-19,100,PG-178:FS,
PG-190,Settings,Module Settings - Cases (/cases/case-settings),Frontend Dev (STOA-Foundation),PG-178,FILE:apps/web/src/components/sidebar/configs/cases.ts;FILE:apps/web/src/components/cases/CaseSettingsSidebarNav.tsx,"Case settings page at /cases/case-settings with case prefix, default priority, auto-assign config; uses in-module settings sidebar pattern; Lighthouse >=90; verified by: pnpm test",Completed,All form fields render and save; sidebar settings nav works; Lighthouse >=90,18,ARTIFACT:apps/web/src/app/cases/(list)/case-settings/page.tsx;ARTIFACT:apps/web/src/app/cases/(list)/case-settings/CaseSettingsContent.tsx;ARTIFACT:apps/web/src/app/cases/(list)/case-settings/CaseSettingsLoading.tsx;ARTIFACT:apps/api/src/modules/legal/case-settings.router.ts;ARTIFACT:apps/api/src/modules/legal/case-automation.ts;ARTIFACT:packages/validators/src/case-settings.ts;ARTIFACT:apps/api/src/__tests__/app-router.smoke.test.ts,VALIDATE:pnpm test,120/240/480,2026-04-19,2026-04-20,100,PG-178:FS,
PG-191,Settings,Module Settings - Tasks (/tasks/task-settings),Frontend Dev (STOA-Foundation),PG-178,FILE:apps/web/src/components/sidebar/configs/tasks.ts;FILE:apps/web/src/components/tasks/TaskSettingsSidebarNav.tsx,"Task settings page at /tasks/task-settings with due-date offset, reminder, templates config; uses in-module settings sidebar pattern; Lighthouse >=90; verified by: pnpm test",Completed,All form fields render and save; sidebar settings nav works; Lighthouse >=90,18,ARTIFACT:apps/web/src/app/tasks/(list)/task-settings/page.tsx,VALIDATE:pnpm test,120/240/480,,,0,PG-178:FS,
PG-192,AI Intelligence,Fix missing /agent-approvals/logs page — PG-152 regression; AgentLogsViewer component exists at apps/web/src/components/ai-monitoring/AgentLogsViewer.tsx but page.tsx is absent causing 404 on route,Frontend Dev (STOA-Intelligence),PG-152,FILE:apps/web/src/components/ai-monitoring/AgentLogsViewer.tsx;FILE:apps/web/src/components/sidebar/configs/agent-approvals.ts,page.tsx created at apps/web/src/app/agent-approvals/logs/page.tsx; route /agent-approvals/logs renders AgentLogsViewer with auth guard and Suspense boundary; matches PG-151/PG-150 shell pattern; Lighthouse >=90; verified by: pnpm test,Completed,Route no longer 404; page loads <500ms; Lighthouse >=90; test coverage >=90%,16,ARTIFACT:apps/web/src/app/agent-approvals/logs/page.tsx;SPEC:.specify/sprints/sprint-16/specifications/PG-192-spec.md;PLAN:.specify/sprints/sprint-16/planning/PG-192-plan.md;EVIDENCE:.specify/sprints/sprint-16/attestations/PG-192/attestation.json,VALIDATE:pnpm --filter @intelliflow/web typecheck;VALIDATE:pnpm --filter @intelliflow/web test --run,30/60/120,2026-03-17,2026-03-17,100,PG-152:FS,
PG-193,AI Intelligence,Workflow Step Progress Panel — Add real-time N/N step progress tracker to /agent-approvals/agents and /agent-approvals/logs; reads WorkflowExecution.currentStep + stepResults from tRPC; shows named steps with status icons (pending/running/completed/failed) and a % progress bar matching the AEO workflow progress UI pattern,Frontend Dev (STOA-Intelligence),"PG-151,PG-192",DESIGN:docs/design/mockups/workflow-progress-panel.png;FILE:apps/web/src/components/ai-monitoring/ActiveAgentsDashboard.tsx;FILE:apps/web/src/components/ai-monitoring/AgentLogsViewer.tsx;FILE:packages/db/prisma/schema.prisma,WorkflowProgressPanel component created; integrated into ActiveAgentsDashboard agent detail expand and AgentLogsViewer log detail view; reads currentStep and stepResults from WorkflowExecution via tRPC; renders progress bar + per-step status with checkmarks; WCAG AA accessible; Lighthouse >=90; verified by: pnpm test. NOTE: 3 follow-ups for whoever touches workflow next — (1) workflow.getExecution procedure has no production caller yet (wire a deep-link page or remove); (2) KNOWN_ENTITY_TYPES in workflow.router.ts is hardcoded (update when adding new entity kinds or derive from @intelliflow/domain); (3) entityId-only fallback returns most-recent workflow per entity which is ambiguous for multi-workflow entities (long-term: add workflowExecutionId FK on ConversationRecord). See memory/project_pg193_follow_ups.md,Completed,Progress panel renders <200ms; step states accurate; accessible (WCAG AA); Lighthouse >=90; test coverage >=90%,16,ARTIFACT:apps/web/src/components/ai-monitoring/WorkflowProgressPanel.tsx;ARTIFACT:apps/web/src/components/ai-monitoring/__tests__/WorkflowProgressPanel.test.tsx,VALIDATE:pnpm --filter @intelliflow/web typecheck;VALIDATE:pnpm --filter @intelliflow/web test --run,120/240/480,2026-03-19,2026-04-09,100,"PG-151:FS,PG-192:FS",
IFC-305,Core CRM,"Componentize CRM entity detail pages (Leads, Contacts) — extract shared SOLID-compliant components from 5284 lines of duplicated god-files; wire bypassed shared components (EntityHeader, SearchFilterBar, ActivityFeed); create cross-entity reusable components (EntityProfileCard, ActivityFilterBar, AiInsightMetricsGrid, ai-insight-transforms utility, EntityErrorState, EntityDetailSkeleton, ConfirmationDialog); reduce page files from 2691/2593 to ~200 lines each",Frontend Dev (STOA-Quality),IFC-226,FILE:apps/web/src/app/leads/[id]/page.tsx;FILE:apps/web/src/app/contacts/[id]/page.tsx;FILE:apps/web/src/components/contacts/ContactDetail.tsx;FILE:apps/web/src/components/shared/entity-header.tsx;FILE:apps/web/src/components/shared/search-filter-bar.tsx;FILE:docs/planning/prd-core-crm.md;FILE:docs/architecture/adr/ADR-045-entity-detail-componentization.md,Entity detail pages reduced to <300 lines each; shared components extracted and reused across leads/contacts; EntityHeader/SearchFilterBar/ActivityFeed wired; AI insight transforms deduplicated into shared utility; each component independently testable >=90% coverage; zero functional regression; verified by: pnpm typecheck + test + lint + build,Backlog,Page file reduction >=80%; Component coverage >=90%; Shared component reuse (3+ bypassed wired); Duplication eliminated >=1500 lines,19,ARTIFACT:apps/web/src/components/leads/LeadDetail.tsx;ARTIFACT:apps/web/src/components/shared/entity-profile-card.tsx;ARTIFACT:apps/web/src/lib/shared/ai-insight-transforms.ts;EVIDENCE:.specify/sprints/sprint-19/attestations/IFC-305/context_ack.json,VALIDATE:pnpm --filter web typecheck;VALIDATE:pnpm --filter web test --run;VALIDATE:pnpm --filter web lint;VALIDATE:pnpm --filter web build;GATE:coverage-gte-90,180/360/720,,,0,IFC-226:FS,
IFC-306,Compliance,"Fix Compliance Calendar Seed Data — replace fabricated/stale events in compliance-calendar.json with realistic SaaS CRM compliance milestones; remove irrelevant ISO 14001 events; update 6 past events still marked scheduled to completed; extend date range through 2026-12 covering GDPR quarterly reviews, SOC 2 audit cycle, ISO 27001 surveillance, ISO 42001 certification path, OWASP assessments; update metadata version and lastUpdated",DPO + Legal (STOA-Foundation),IFC-073,FILE:docs/planning/compliance-calendar.json;FILE:apps/web/src/app/api/compliance/timeline/route.ts;FILE:apps/web/src/app/api/compliance/types.ts,"compliance-calendar.json has 22 events covering 4 standards (GDPR, SOC 2, ISO 27001, ISO 42001, OWASP); no ISO 14001; all past events status=completed; all future events status=scheduled; date range Oct 2025–Dec 2026; timeline API serves updated data; verified by: pnpm test",Completed,22 events; 0 stale statuses; 5 standards; 12-month forward coverage; API returns updated events,19,ARTIFACT:docs/planning/compliance-calendar.json;EVIDENCE:.specify/sprints/sprint-19/attestations/IFC-306/context_ack.json,VALIDATE:pnpm --filter web typecheck;VALIDATE:pnpm --filter web test --run,15/30/60,,,0,IFC-073:FS,
PG-194,Governance Pages,"Governance Compliance Dashboard — register and wire existing /governance/compliance page; replace 5 hardcoded ComplianceCard scores (ISO 27001 92%, ISO 42001 45%, ISO 14001 78%, GDPR 98%, ADR 60%) with real compliance API data; remove hardcoded overall score 74.6 and '16 Total' action items; remove ISO 14001 card (irrelevant to SaaS); connect ComplianceTimeline and RiskHeatMap to live API endpoints; ensure ComplianceDetailPanel drilldown shows real control data; tests >=90%",Frontend Dev (STOA-Quality),"IFC-073,IFC-100,IFC-306",FILE:apps/web/src/app/governance/compliance/page.tsx;FILE:apps/web/src/app/governance/compliance/components/ComplianceTimeline.tsx;FILE:apps/web/src/app/api/compliance/timeline/route.ts;FILE:apps/web/src/app/api/compliance/[standardId]/route.ts;FILE:apps/web/src/app/api/compliance/risks/route.ts;DESIGN:docs/design/README.md,ComplianceCards load scores from API not hardcoded; overall score computed from live data; ISO 14001 card removed; ComplianceTimeline renders events from compliance-calendar.json; RiskHeatMap fetches from /api/compliance/risks; ComplianceDetailPanel shows real controls; Lighthouse >=90; test coverage >=90%; verified by: pnpm test,Backlog,0 hardcoded scores; API-driven cards; Lighthouse >=90; coverage >=90%,20,ARTIFACT:apps/web/src/app/governance/compliance/page.tsx;ARTIFACT:apps/web/src/app/governance/compliance/components/ComplianceTimeline.tsx;EVIDENCE:.specify/sprints/sprint-20/attestations/PG-194/context_ack.json,GATE:lighthouse-gte-90;VALIDATE:pnpm --filter web typecheck;VALIDATE:pnpm --filter web test --run;GATE:coverage-gte-90,60/120/240,,,0,"IFC-073:FS,IFC-100:FS,IFC-306:FS",
IFC-307,AI & Intelligence,"Contact Enrichment Pipeline — Automated background job that periodically enriches contact/lead data from external providers (Clearbit, Apollo). Includes: BullMQ queue intelliflow-contact-enrichment, enrichment adapter with rate limiting, on-create trigger in contact.router.ts, periodic cron sweep for stale profiles (>30 days), cost tracking via CostTracker, field updates (company, title, social profiles, industry)",Tech Lead (STOA-Domain),"IFC-168,IFC-131",FILE:apps/ai-worker/src/jobs/enrichment.job.ts;FILE:packages/adapters/src/enrichment/enrichment-provider.ts;FILE:apps/api/src/modules/contact/contact.router.ts,"External enrichment provider adapter with rate limiting; BullMQ queue intelliflow-contact-enrichment wired with producer on contact create; periodic cron sweep for stale profiles; cost tracking per call via CostTracker; contact fields updated: company, title, social profiles, industry; >=90% test coverage; all 4 validations pass",Backlog,Enrichment rate >=60%; API cost <$0.05 per call; Queue p95 <5s; Coverage >=90%,22,ARTIFACT:apps/ai-worker/src/chains/enrichment.chain.ts;ARTIFACT:apps/ai-worker/src/jobs/enrichment.job.ts;ARTIFACT:packages/adapters/src/enrichment/enrichment-provider.ts;EVIDENCE:.specify/sprints/sprint-22/attestations/IFC-307/context_ack.json,VALIDATE:pnpm typecheck;VALIDATE:pnpm test --run;VALIDATE:pnpm lint;VALIDATE:pnpm build;GATE:coverage-gte-90,300/480/780,,,0,"IFC-168:FS,IFC-131:FS",
IFC-308,AI & Intelligence,"Scheduled Report Generation — BullMQ cron job that generates daily/weekly analytics snapshots and emails summary reports to team leads. Includes: report template system (pipeline summary, lead conversion, revenue trends, SLA compliance), PDF/HTML report rendering, email delivery via notifications worker, configurable schedule per tenant, report archive storage",Tech Lead (STOA-Domain),"IFC-168,IFC-024",FILE:apps/ai-worker/src/jobs/report-generation.job.ts;FILE:apps/api/src/modules/analytics/analytics.router.ts;FILE:apps/api/src/modules/analytics/report-templates.ts,"4+ report templates (pipeline, leads, revenue, SLA); PDF/HTML rendering; email delivery via notifications worker; configurable schedule per tenant; report archive in storage; >=90% test coverage; all 4 validations pass",Backlog,>=4 report templates; >=99% delivery reliability; Generation p95 <30s; Coverage >=90%,24,ARTIFACT:apps/ai-worker/src/jobs/report-generation.job.ts;ARTIFACT:apps/api/src/modules/analytics/report-templates.ts;EVIDENCE:.specify/sprints/sprint-24/attestations/IFC-308/context_ack.json,VALIDATE:pnpm typecheck;VALIDATE:pnpm test --run;VALIDATE:pnpm lint;VALIDATE:pnpm build;GATE:coverage-gte-90,360/600/960,,,0,"IFC-168:FS,IFC-024:FS",
PG-195,Performance,"Subset Material Symbols font to unblock Lighthouse Performance >=90 gate — reduces 3.5 MB MaterialSymbolsOutlined.woff2 shipped by root layout to every route (PG-056 Lighthouse=63 baseline). Audit the 1,421 .material-symbols-outlined call sites, build a subsetter script that extracts the exact glyph set, regenerate a smaller woff2 (<500 KB target), add CI guard so new glyphs are added to the audit list.",Growth FE (STOA-Foundation),PG-056,FILE:apps/web/src/app/layout.tsx;FILE:apps/web/src/app/globals.css;FILE:apps/web/public/fonts/MaterialSymbolsOutlined.woff2;FILE:.specify/sprints/sprint-17/attestations/PG-056/attestation.json;FILE:artifacts/lighthouse/pg-056-500-r1.json;FILE:docs/claude-refs/nonfunctional.md;POLICY:Lighthouse >=90 per apps/web/CLAUDE.md,"Subsetted font replaces full Material Symbols woff2 (<500 KB); Lighthouse Performance >=90 for /404 and /500 on desktop production build; zero visual regressions across the 1,421 .material-symbols-outlined call sites; subsetter script committed + reproducible; glyph-audit JSON enumerates the used glyph set; artifacts: subsetted woff2, glyph-audit.json, subset script, updated layout.tsx",Completed,Font transfer <500 KB (from 3473 KB); Lighthouse Perf /500 >=90; Lighthouse Perf /404 >=90; Glyph coverage 100% (zero tofu); Total page byte-weight /500 <1 MB,17,ARTIFACT:apps/web/public/fonts/MaterialSymbolsOutlined.woff2;ARTIFACT:tools/scripts/subset-material-symbols.mjs;ARTIFACT:artifacts/reports/material-symbols-glyph-audit.json;ARTIFACT:apps/web/src/app/layout.tsx;EVIDENCE:.specify/sprints/sprint-17/attestations/PG-195/attestation.json;EVIDENCE:artifacts/lighthouse/pg-195-post-subset-500.json;EVIDENCE:artifacts/lighthouse/pg-195-post-subset-404.json,GATE:lighthouse-gte-90;VALIDATE:pnpm --filter @intelliflow/web typecheck;VALIDATE:pnpm --filter @intelliflow/web test --run;VALIDATE:pnpm --filter @intelliflow/web build;AUDIT:node tools/scripts/subset-material-symbols.mjs --verify,90/180/360,2026-04-13,2026-04-15,100,PG-056:FS,
IFC-309,Compliance,"Server-side terms acceptance — persist immutable TermsAcceptance audit record (tenantId, userId, termsVersion, acceptedAt, ipAddress, userAgent, route) via tRPC legal.acceptTerms mutation and legal.getAcceptance query; wire Confirm UI on /terms for authenticated users only; replaces client-only localStorage tracker removed from PG-051 as a misleading legal-compliance signal.",Tech Lead (STOA-Domain),"PG-051,IFC-058,IFC-124",FILE:packages/db/prisma/schema.prisma;FILE:apps/api/src/modules/auth/auth.router.ts;FILE:apps/web/src/app/(public)/terms/page.tsx;FILE:docs/shared/terms-content.md;POLICY:Terms v2026.08 published (PG-051);ENV:Supabase RLS enabled per tenant,"TermsAcceptance Prisma model (tenantId, userId, termsVersion, acceptedAt, ipAddress, userAgent, route) with no UPDATE/DELETE paths; tRPC legal.acceptTerms mutation idempotent per (userId, termsVersion); legal.getAcceptance query returns latest record per user; RLS policy scoped by tenantId; Confirm UI on /terms (authenticated users only) calls mutation and hides when current version already accepted; DB migration reviewed; >=90% scoped coverage; all 4 validations pass",Backlog,Mutation p95 <200ms; Audit record immutability (no UPDATE/DELETE on router); 100% tenant isolation in RLS integration test; Coverage >=90%,18,ARTIFACT:packages/db/prisma/schema.prisma;ARTIFACT:packages/domain/src/legal/TermsAcceptance.ts;ARTIFACT:apps/api/src/modules/legal/legal.router.ts;ARTIFACT:apps/web/src/components/legal/TermsAcceptanceConfirm.tsx;EVIDENCE:.specify/sprints/sprint-18/attestations/IFC-309/context_ack.json,VALIDATE:pnpm typecheck;VALIDATE:pnpm test --run;VALIDATE:pnpm lint;VALIDATE:pnpm build;GATE:coverage-gte-90,240/480/720,2026-04-20,2026-05-11,0,"PG-051:FS,IFC-058:FS,IFC-124:FS",
IFC-310,Core CRM,"Duplicate-detection runtime for contacts + accounts (PG-182/PG-183 follow-up) — new DuplicateDetectionService (or per-entity services sharing a rule-evaluator) that reads {Contact,Account}DuplicateRule rows at create/update time and either flags or auto-merges/auto-links records; consumes autoMergeOnExactEmail + autoLinkContactsByDomain + notifyOnDuplicate + aiDuplicateDetection + aiIndustryInference + aiEnrichment toggles from the respective AutomationSetting table; transactional merge combines rows (activities, notes, opportunities, tags, aiInsight) with conflict resolution.",Backend Eng (STOA-Domain),"PG-182,PG-183",FILE:apps/api/src/modules/contact/contact-automation.ts;FILE:apps/api/src/modules/contact/contact.router.ts;FILE:apps/api/src/modules/account/account-automation.ts;FILE:apps/api/src/modules/account/account.router.ts;FILE:packages/db/prisma/schema.prisma;FILE:.specify/sprints/sprint-17/specifications/PG-182-spec.md;FILE:.specify/sprints/sprint-17/specifications/PG-183-spec.md,"Rule evaluator runs {Contact,Account}DuplicateRule checks at create+update time; contacts respect autoMergeOnExactEmail/notifyOnDuplicate/aiDuplicateDetection; accounts respect autoLinkContactsByDomain/notifyOnDuplicate; auto-merge/auto-link operations are transactional and preserve the oldest record's id while folding in newer relations; new contact_duplicate and account_duplicate notification types added to NOTIFICATION_TYPES; aiDuplicateDetection uses pgvector similarity on the entity's embeddings; >=90% scoped coverage; all 4 validations pass",Completed,Duplicate-flag rate per entity; auto-merge/auto-link success rate; merge p95 <500ms; zero cross-tenant merges in integration test; Coverage >=90%,18,ARTIFACT:apps/api/src/shared/duplicate-rule-evaluator.ts;ARTIFACT:apps/api/src/modules/contact/contact-duplicate-detection.service.ts;ARTIFACT:apps/api/src/modules/account/account-duplicate-detection.service.ts;ARTIFACT:apps/api/src/shared/__tests__/duplicate-rule-evaluator.test.ts;ARTIFACT:apps/api/src/modules/contact/__tests__/contact-duplicate-detection.service.test.ts;ARTIFACT:apps/api/src/modules/account/__tests__/account-duplicate-detection.service.test.ts;ARTIFACT:apps/api/src/modules/contact/__tests__/contact-merge.bench.test.ts;ARTIFACT:apps/api/src/modules/contact/__tests__/contact-merge.real-db.bench.test.ts;ARTIFACT:apps/api/src/modules/contact/__tests__/contact-duplicate-detection.integration.test.ts;ARTIFACT:apps/ai-worker/src/workers/contact-embed-worker.ts;ARTIFACT:apps/ai-worker/src/workers/__tests__/contact-embed-worker.test.ts;ARTIFACT:packages/application/src/services/events/ContactMergedEvent.ts;ARTIFACT:packages/application/src/services/events/__tests__/ContactMergedEvent.test.ts;ARTIFACT:packages/application/src/services/AccountService.ts;ARTIFACT:packages/application/src/services/ContactService.ts;ARTIFACT:packages/application/src/ports/repositories/ContactRepositoryPort.ts;ARTIFACT:packages/domain/src/crm/contact/CrossTenantOrNotFoundError.ts;ARTIFACT:packages/domain/src/crm/contact/ContactRepository.ts;ARTIFACT:packages/adapters/src/repositories/PrismaContactRepository.ts;ARTIFACT:packages/adapters/src/repositories/InMemoryContactRepository.ts;ARTIFACT:packages/validators/src/notifications.ts;ARTIFACT:packages/validators/src/contact.ts;ARTIFACT:apps/api/src/container.ts;ARTIFACT:apps/api/src/context.ts;ARTIFACT:apps/api/src/modules/contact/contact.router.ts;ARTIFACT:apps/api/src/modules/account/account.router.ts;ARTIFACT:apps/ai-worker/src/ai-worker.ts;ARTIFACT:apps/ai-worker/src/index.ts;ARTIFACT:eslint.config.mjs;ARTIFACT:docs/architecture/adr/ADR-050-duplicate-detection-runtime.md;ARTIFACT:artifacts/coverage/IFC-310-before.json;ARTIFACT:artifacts/coverage/IFC-310-after.json;ARTIFACT:artifacts/benchmarks/IFC-310-merge.json;SPEC:.specify/sprints/sprint-18/specifications/IFC-310-spec.md;PLAN:.specify/sprints/sprint-18/planning/IFC-310-plan.md;EVIDENCE:.specify/sprints/sprint-18/attestations/IFC-310/attestation.json,VALIDATE:pnpm typecheck;VALIDATE:pnpm test --run;VALIDATE:pnpm lint;VALIDATE:pnpm build;GATE:coverage-gte-90,360/720/1080,2026-04-20,2026-04-20,100,"PG-182:FS,PG-183:FS",
IFC-311,Core CRM,"Reassign endpoints + notifyOnOwnerChange wiring for contacts + accounts (PG-182/PG-183 follow-up) — add contact.reassign/contact.bulkReassign and account.reassign/account.bulkReassign tRPC procedures; on owner change, invoke the notifyContactReassignment or notifyAccountReassignment helper (both already shipped — PG-182 in contact-automation.ts, PG-183 in account-automation.ts) with the bound createNotification from notifications.router.ts; contact_reassigned is already in NOTIFICATION_TYPES — add account_reassigned alongside it.",Backend Eng (STOA-Domain),"PG-182,PG-183",FILE:apps/api/src/modules/contact/contact-automation.ts;FILE:apps/api/src/modules/contact/contact.router.ts;FILE:apps/api/src/modules/account/account-automation.ts;FILE:apps/api/src/modules/account/account.router.ts;FILE:apps/api/src/modules/notifications/notifications.router.ts;FILE:packages/validators/src/notifications.ts,contact.reassign + contact.bulkReassign and account.reassign + account.bulkReassign mutations; all validate caller permission; each reads the matching AutomationSetting.notifyOnOwnerChange flag and invokes the notify*Reassignment helper when true; emit contact_reassigned + account_reassigned notifications to both old and new owner; idempotent when new owner == current owner; >=90% scoped coverage,Completed,Reassign p95 <200ms per entity; Bulk reassign handles 100 rows <2s; Both parties receive notification in integration test; Coverage >=90%,18,ARTIFACT:apps/api/src/modules/contact/contact.router.ts;ARTIFACT:apps/api/src/modules/account/account.router.ts;ARTIFACT:apps/api/src/modules/contact/__tests__/contact.reassign.test.ts;ARTIFACT:apps/api/src/modules/account/__tests__/account.reassign.test.ts;ARTIFACT:packages/validators/src/notifications.ts;ARTIFACT:packages/validators/src/contact.ts;ARTIFACT:packages/validators/src/account.ts;ARTIFACT:apps/api/src/modules/account/account-reassign.ts;ARTIFACT:apps/api/src/modules/contact/contact-reassign.ts;SPEC:.specify/sprints/sprint-18/specifications/IFC-311-spec.md;PLAN:.specify/sprints/sprint-18/planning/IFC-311-plan.md;EVIDENCE:.specify/sprints/sprint-18/attestations/IFC-311/attestation.json,VALIDATE:pnpm typecheck;VALIDATE:pnpm test --run;VALIDATE:pnpm lint;VALIDATE:pnpm build;GATE:coverage-gte-90,240/480/720,2026-04-20,2026-04-20,100,"PG-182:FS,PG-183:FS",
IFC-312,AI/Intelligence,"AI chains for contacts + accounts (PG-182/PG-183 follow-up) — wire the remaining AI toggles on both entities to real LLM/embedding consumers: aiEnrichment (external enrichment API + provider adapter, shared across entities), aiTagSuggestions (LLM prompt + surface on detail pages), aiInsightGeneration (LLM chain writing to {Contact,Account}AIInsight + surface), aiAutoReplyDrafting (contact inbox), aiIndustryInference (account-only LLM classifier that picks the best AccountIndustryOption), aiAccountScoring (account-only LLM scorer that writes to the Account score field).",AI Eng (STOA-Intelligence),"PG-182,PG-183,IFC-310",FILE:apps/api/src/modules/contact/contact-automation.ts;FILE:apps/api/src/modules/contact/contact.router.ts;FILE:apps/api/src/modules/account/account-automation.ts;FILE:apps/api/src/modules/account/account.router.ts;FILE:apps/ai-worker/src/contact-ai.chains.ts;FILE:apps/ai-worker/src/account-ai.chains.ts;FILE:packages/db/prisma/schema.prisma,"Each AI toggle reads the tenant flag from the matching AutomationSetting before consuming the chain; aiEnrichment (contact+account) backfills empty fields on create via a shared enrichment adapter; aiTagSuggestions renders suggestions on both detail pages; aiInsightGeneration writes to {Contact,Account}AIInsight (both models already exist) and renders on the detail page; aiAutoReplyDrafting drafts contact inbox replies (review-before-send); aiIndustryInference classifies an account against AccountIndustryOption vocabulary; aiAccountScoring writes to Account score + records provenance; >=90% scoped coverage on chain orchestration; AI safety guardrails per stoa-intelligence",Completed,Enrichment fill rate per entity; tag-suggestion acceptance rate; insight freshness (insights per active record); chain p95 <5s; Coverage >=90%,19,ARTIFACT:apps/ai-worker/src/contact-enrichment.chain.ts;ARTIFACT:apps/ai-worker/src/account-enrichment.chain.ts;ARTIFACT:apps/ai-worker/src/shared/enrichment-adapter.ts;ARTIFACT:apps/ai-worker/src/contact-tag-suggestion.chain.ts;ARTIFACT:apps/ai-worker/src/account-tag-suggestion.chain.ts;ARTIFACT:apps/ai-worker/src/contact-insight.chain.ts;ARTIFACT:apps/ai-worker/src/account-insight.chain.ts;ARTIFACT:apps/ai-worker/src/contact-reply-draft.chain.ts;ARTIFACT:apps/ai-worker/src/account-industry-inference.chain.ts;ARTIFACT:apps/ai-worker/src/account-scoring.chain.ts;ARTIFACT:apps/ai-worker/src/chains/deal-duplicate.chain.ts;ARTIFACT:apps/ai-worker/src/chains/deal-scoring.chain.ts;ARTIFACT:apps/ai-worker/src/chains/deal-next-step.chain.ts;ARTIFACT:apps/ai-worker/src/chains/deal-tag-suggestion.chain.ts;ARTIFACT:apps/ai-worker/src/chains/deal-insight.chain.ts;ARTIFACT:apps/ai-worker/src/chains/deal-win-loss-prediction.chain.ts;ARTIFACT:apps/ai-worker/src/chains/ticket-duplicate.chain.ts;ARTIFACT:apps/ai-worker/src/chains/ticket-categorization.chain.ts;ARTIFACT:apps/ai-worker/src/chains/ticket-sentiment.chain.ts;ARTIFACT:apps/ai-worker/src/chains/ticket-next-step.chain.ts;ARTIFACT:apps/ai-worker/src/chains/ticket-tag-suggestion.chain.ts;ARTIFACT:apps/ai-worker/src/chains/ticket-insight.chain.ts,VALIDATE:pnpm typecheck;VALIDATE:pnpm test --run;VALIDATE:pnpm lint;VALIDATE:pnpm build;GATE:coverage-gte-90,540/1080/1620,2026-04-20,2026-04-22,100,"PG-182:FS,PG-183:FS,IFC-310:FS",
PG-196,Settings,Module Settings - Account Tiers (/accounts/(list)/account-tiers),Frontend Dev (STOA-Foundation),"PG-178,PG-183",FILE:apps/web/src/components/sidebar/configs/accounts.ts;FILE:apps/web/src/app/accounts/(list)/account-settings/AccountSettingsContent.tsx;FILE:apps/api/src/modules/account/account-automation.ts;FILE:docs/planning/module-settings-playbook.md;FILE:docs/planning/prd-module-settings.md,"Account tiers at /accounts/(list)/account-tiers (tier definitions bronze/silver/gold/platinum, point thresholds, benefits matrix, default tier, upgrade/downgrade rules). MUST follow docs/planning/module-settings-playbook.md: PageHeader+bento grid; canonical EmptyState (entity + phase=passive); system-compliant CTAs; TagsTab via forwardRef; $transaction on all destructive writes; no skipDuplicates; Zod superRefine for duplicate tier names; colorToken CHECK constraint; AI defaults FALSE; wire every Boolean toggle in account-automation.ts OR declare as category-2 follow-up under IFC-310/311/312; include cross-tenant negative test; Lighthouse >=90; verified by: pnpm test",Completed,All 4 validations pass; every toggle has runtime consumer or IFC-* follow-up; EmptyState uses project SVG; cross-tenant negative test; Lighthouse >=90,18,ARTIFACT:apps/web/src/app/accounts/(list)/account-tiers/page.tsx;ARTIFACT:apps/web/src/app/accounts/(list)/account-tiers/AccountTiersContent.tsx;ARTIFACT:apps/api/src/modules/account/account-tiers.router.ts;ARTIFACT:packages/validators/src/account-tiers.ts;EVIDENCE:.specify/sprints/sprint-18/attestations/PG-196/context_ack.json,VALIDATE:pnpm typecheck;VALIDATE:pnpm test --run;VALIDATE:pnpm lint;VALIDATE:pnpm build;GATE:lighthouse-gte-90,180/360/540,,,0,"PG-178:FS,PG-183:FS",
PG-197,Settings,Module Settings - Territory Mapping (/accounts/(list)/territory-mapping),Frontend Dev (STOA-Foundation),"PG-178,PG-183",FILE:apps/web/src/components/sidebar/configs/accounts.ts;FILE:apps/web/src/app/accounts/(list)/account-settings/AccountSettingsContent.tsx;FILE:apps/api/src/modules/account/account-automation.ts;FILE:docs/planning/module-settings-playbook.md;FILE:docs/planning/prd-module-settings.md,"Territory mapping at /accounts/(list)/territory-mapping (geographic territory rules by region/country/postcode, assignment strategies round-robin/load-balance/manual, overlap resolution priority, default territory). MUST follow docs/planning/module-settings-playbook.md: PageHeader+bento grid; canonical EmptyState (entity + phase=passive); system-compliant CTAs; TagsTab via forwardRef; $transaction on all destructive writes; no skipDuplicates; Zod superRefine for duplicate (region, country) pairs; colorToken CHECK constraint; AI defaults FALSE; wire every Boolean toggle in account-automation.ts OR declare as category-2 follow-up under IFC-310/311/312; include cross-tenant negative test; Lighthouse >=90; verified by: pnpm test",Completed,All 4 validations pass; every toggle has runtime consumer or IFC-* follow-up; EmptyState uses project SVG; cross-tenant negative test; Lighthouse >=90,18,ARTIFACT:apps/web/src/app/accounts/(list)/territory-mapping/page.tsx;ARTIFACT:apps/web/src/app/accounts/(list)/territory-mapping/TerritoryMappingContent.tsx;ARTIFACT:apps/api/src/modules/account/account-territories.router.ts;ARTIFACT:packages/validators/src/account-territories.ts;EVIDENCE:.specify/sprints/sprint-18/attestations/PG-197/context_ack.json,VALIDATE:pnpm typecheck;VALIDATE:pnpm test --run;VALIDATE:pnpm lint;VALIDATE:pnpm build;GATE:lighthouse-gte-90,180/360/540,,,0,"PG-178:FS,PG-183:FS",
PG-198,Settings,Module Settings - Approval Policies (/agent-approvals/approval-policies),Frontend Dev (STOA-Foundation),"PG-178,PG-152,PG-192",FILE:apps/web/src/components/sidebar/configs/agent-approvals.ts;FILE:apps/web/src/components/ai-monitoring/AgentLogsViewer.tsx;FILE:docs/planning/module-settings-playbook.md;FILE:docs/planning/prd-module-settings.md,"Approval policies at /agent-approvals/approval-policies (policy rules: auto-approve thresholds, required reviewers, escalation paths, approval timeout SLAs, per-agent overrides). MUST follow docs/planning/module-settings-playbook.md: PageHeader+bento grid; canonical EmptyState (entity + phase=passive); system-compliant CTAs; TagsTab via forwardRef; $transaction on all destructive writes; no skipDuplicates; Zod superRefine for duplicate (agent, action) pairs; colorToken CHECK constraint; AI defaults FALSE; wire every Boolean toggle in agent-approval automation OR declare as category-2 follow-up under IFC-310/311/312; include cross-tenant negative test; Lighthouse >=90; verified by: pnpm test",Completed,All 4 validations pass; every toggle has runtime consumer or IFC-* follow-up; EmptyState uses project SVG; cross-tenant negative test; Lighthouse >=90,18,ARTIFACT:apps/web/src/app/agent-approvals/approval-policies/page.tsx;ARTIFACT:apps/web/src/app/agent-approvals/approval-policies/ApprovalPoliciesContent.tsx;ARTIFACT:apps/api/src/modules/agent-approval/approval-policies.router.ts;ARTIFACT:packages/validators/src/approval-policies.ts;EVIDENCE:.specify/sprints/sprint-18/attestations/PG-198/context_ack.json,VALIDATE:pnpm typecheck;VALIDATE:pnpm test --run;VALIDATE:pnpm lint;VALIDATE:pnpm build;GATE:lighthouse-gte-90,180/360/540,,,0,"PG-178:FS,PG-152:FS,PG-192:FS",
PG-199,Settings,Module Settings - Model Config (/agent-approvals/model-config),Frontend Dev (STOA-Foundation),"PG-178,PG-152,PG-192",FILE:apps/web/src/components/sidebar/configs/agent-approvals.ts;FILE:apps/web/src/components/ai-monitoring/AgentLogsViewer.tsx;FILE:docs/planning/module-settings-playbook.md;FILE:docs/planning/prd-module-settings.md,"Model config at /agent-approvals/model-config (per-agent model selection, temperature, max tokens, fallback chain, per-agent cost ceilings). Respect Never-Downgrade rule for model IDs (memory/feedback_never_downgrade_without_approval.md). MUST follow docs/planning/module-settings-playbook.md: PageHeader+bento grid; canonical EmptyState (entity + phase=passive); system-compliant CTAs; TagsTab via forwardRef; $transaction on all destructive writes; no skipDuplicates; Zod superRefine for duplicate agent keys; colorToken CHECK constraint; AI defaults FALSE; wire every Boolean toggle in agent-approval automation OR declare as category-2 follow-up under IFC-310/311/312; include cross-tenant negative test; Lighthouse >=90; verified by: pnpm test",Completed,All 4 validations pass; every toggle has runtime consumer or IFC-* follow-up; EmptyState uses project SVG; cross-tenant negative test; Lighthouse >=90,18,ARTIFACT:apps/web/src/app/agent-approvals/model-config/page.tsx;ARTIFACT:apps/web/src/app/agent-approvals/model-config/ModelConfigContent.tsx;ARTIFACT:apps/api/src/modules/agent-approval/model-config.router.ts;ARTIFACT:packages/validators/src/model-config.ts;EVIDENCE:.specify/sprints/sprint-18/attestations/PG-199/context_ack.json,VALIDATE:pnpm typecheck;VALIDATE:pnpm test --run;VALIDATE:pnpm lint;VALIDATE:pnpm build;GATE:lighthouse-gte-90,180/360/540,,,0,"PG-178:FS,PG-152:FS,PG-192:FS",
PG-200,Settings,Module Settings - Report Templates (/analytics/report-templates),Frontend Dev (STOA-Foundation),"PG-178,PG-187",FILE:apps/web/src/components/sidebar/configs/analytics.ts;FILE:apps/web/src/app/analytics/report-settings/page.tsx;FILE:docs/planning/module-settings-playbook.md;FILE:docs/planning/prd-module-settings.md,Report templates at /analytics/report-templates (saveable report layouts: filter set + selected columns + chart type + default period + sharing scope). MUST follow docs/planning/module-settings-playbook.md: PageHeader+bento grid; canonical EmptyState (entity + phase=passive); system-compliant CTAs; TagsTab via forwardRef; $transaction on all destructive writes; no skipDuplicates; Zod superRefine for duplicate template names within scope; colorToken CHECK constraint; AI defaults FALSE; wire every Boolean toggle in analytics automation OR declare as category-2 follow-up under IFC-310/311/312; include cross-tenant negative test; Lighthouse >=90; verified by: pnpm test,Backlog,All 4 validations pass; every toggle has runtime consumer or IFC-* follow-up; EmptyState uses project SVG; cross-tenant negative test; Lighthouse >=90,18,ARTIFACT:apps/web/src/app/analytics/report-templates/page.tsx;ARTIFACT:apps/web/src/app/analytics/report-templates/ReportTemplatesContent.tsx;ARTIFACT:apps/api/src/modules/analytics/report-templates.router.ts;ARTIFACT:packages/validators/src/report-templates.ts;EVIDENCE:.specify/sprints/sprint-18/attestations/PG-200/context_ack.json,VALIDATE:pnpm typecheck;VALIDATE:pnpm test --run;VALIDATE:pnpm lint;VALIDATE:pnpm build;GATE:lighthouse-gte-90,180/360/540,,,0,"PG-178:FS,PG-187:FS",
PG-201,Settings,Module Settings - Scheduled Reports (/analytics/scheduled-reports),Frontend Dev (STOA-Foundation),"PG-178,PG-187",FILE:apps/web/src/components/sidebar/configs/analytics.ts;FILE:apps/web/src/app/analytics/report-settings/page.tsx;FILE:docs/planning/module-settings-playbook.md;FILE:docs/planning/prd-module-settings.md,"Scheduled reports at /analytics/scheduled-reports (cron schedules, recipient lists, delivery format PDF/CSV/email-body, template ref). IFC-308 BullMQ cron READS these schedules - schema must match job expectations. MUST follow docs/planning/module-settings-playbook.md: PageHeader+bento grid; canonical EmptyState (entity + phase=passive); system-compliant CTAs; TagsTab via forwardRef; $transaction on all destructive writes; no skipDuplicates; Zod superRefine for duplicate schedule names; colorToken CHECK constraint; AI defaults FALSE; wire every Boolean toggle in analytics automation OR declare as category-2 follow-up under IFC-310/311/312; include cross-tenant negative test; Lighthouse >=90; verified by: pnpm test",Completed,All 4 validations pass; every toggle has runtime consumer or IFC-* follow-up; EmptyState uses project SVG; cross-tenant negative test; Lighthouse >=90,18,ARTIFACT:apps/web/src/app/analytics/scheduled-reports/page.tsx;ARTIFACT:apps/web/src/app/analytics/scheduled-reports/ScheduledReportsContent.tsx;ARTIFACT:apps/api/src/modules/analytics/scheduled-reports.router.ts;ARTIFACT:packages/validators/src/scheduled-reports.ts;EVIDENCE:.specify/sprints/sprint-18/attestations/PG-201/context_ack.json,VALIDATE:pnpm typecheck;VALIDATE:pnpm test --run;VALIDATE:pnpm lint;VALIDATE:pnpm build;GATE:lighthouse-gte-90,180/360/540,,,0,"PG-178:FS,PG-187:FS",
PG-202,Settings,Module Settings - Availability (/calendar/availability),Frontend Dev (STOA-Foundation),"PG-178,PG-189",FILE:apps/web/src/components/sidebar/configs/appointments.ts;FILE:apps/web/src/app/calendar/calendar-settings/page.tsx;FILE:apps/web/src/lib/shared/timezone-utils.ts;FILE:apps/web/src/providers/TimezoneProvider.tsx;FILE:docs/planning/module-settings-playbook.md;FILE:docs/planning/prd-module-settings.md,"Availability at /calendar/availability (working hours per weekday, timezones, buffers before/after, max daily bookings, unavailable date ranges). TIMEZONE-REFACTOR-AWARE: store UTC in DB, display via useTimezoneContext() (memory/project_timezone_refactor.md). MUST follow docs/planning/module-settings-playbook.md: PageHeader+bento grid; canonical EmptyState (entity + phase=passive); system-compliant CTAs; TagsTab via forwardRef; $transaction on all destructive writes; no skipDuplicates; Zod superRefine for overlapping time ranges per weekday; colorToken CHECK constraint; AI defaults FALSE; wire every Boolean toggle in calendar automation OR declare as category-2 follow-up under IFC-310/311/312; include cross-tenant negative test; Lighthouse >=90; verified by: pnpm test",Completed,All 4 validations pass; every toggle has runtime consumer or IFC-* follow-up; EmptyState uses project SVG; cross-tenant negative test; Lighthouse >=90,18,ARTIFACT:apps/web/src/app/calendar/availability/page.tsx;ARTIFACT:apps/web/src/app/calendar/availability/AvailabilityContent.tsx;ARTIFACT:apps/api/src/modules/calendar/availability.router.ts;ARTIFACT:packages/validators/src/availability.ts;EVIDENCE:.specify/sprints/sprint-18/attestations/PG-202/context_ack.json,VALIDATE:pnpm typecheck;VALIDATE:pnpm test --run;VALIDATE:pnpm lint;VALIDATE:pnpm build;GATE:lighthouse-gte-90,180/360/540,,,0,"PG-178:FS,PG-189:FS",
PG-203,Settings,Module Settings - Event Types (/calendar/event-types),Frontend Dev (STOA-Foundation),"PG-178,PG-189",FILE:apps/web/src/components/sidebar/configs/appointments.ts;FILE:apps/web/src/app/calendar/calendar-settings/page.tsx;FILE:docs/planning/module-settings-playbook.md;FILE:docs/planning/prd-module-settings.md,"Event types at /calendar/event-types (meeting type definitions: duration, color, default description, booking link slug, required form fields, location type). MUST follow docs/planning/module-settings-playbook.md: PageHeader+bento grid; canonical EmptyState (entity + phase=passive); system-compliant CTAs; TagsTab via forwardRef; $transaction on all destructive writes; no skipDuplicates; Zod superRefine for duplicate booking slugs; colorToken CHECK constraint; AI defaults FALSE; wire every Boolean toggle in calendar automation OR declare as category-2 follow-up under IFC-310/311/312; include cross-tenant negative test; Lighthouse >=90; verified by: pnpm test",Completed,All 4 validations pass; every toggle has runtime consumer or IFC-* follow-up; EmptyState uses project SVG; cross-tenant negative test; Lighthouse >=90,18,ARTIFACT:apps/web/src/app/calendar/event-types/page.tsx;ARTIFACT:apps/web/src/app/calendar/event-types/EventTypesContent.tsx;ARTIFACT:apps/api/src/modules/calendar/event-types.router.ts;ARTIFACT:packages/validators/src/event-types.ts;EVIDENCE:.specify/sprints/sprint-18/attestations/PG-203/context_ack.json,VALIDATE:pnpm typecheck;VALIDATE:pnpm test --run;VALIDATE:pnpm lint;VALIDATE:pnpm build;GATE:lighthouse-gte-90,180/360/540,,,0,"PG-178:FS,PG-189:FS",
PG-204,Settings,Module Settings - Case Types (/cases/case-types),Frontend Dev (STOA-Foundation),"PG-178,PG-190",FILE:apps/web/src/components/sidebar/configs/cases.ts;FILE:apps/web/src/app/cases/case-settings/page.tsx;FILE:docs/planning/module-settings-playbook.md;FILE:docs/planning/prd-module-settings.md,"Case types at /cases/case-types (taxonomy: category, default priority, default SLA, required fields, resolution workflow). MUST follow docs/planning/module-settings-playbook.md: PageHeader+bento grid; canonical EmptyState (entity + phase=passive); system-compliant CTAs; TagsTab via forwardRef; $transaction on all destructive writes; no skipDuplicates; Zod superRefine for duplicate type names; colorToken CHECK constraint; AI defaults FALSE; wire every Boolean toggle in case automation OR declare as category-2 follow-up under IFC-310/311/312; include cross-tenant negative test; Lighthouse >=90; verified by: pnpm test",Completed,All 4 validations pass; every toggle has runtime consumer or IFC-* follow-up; EmptyState uses project SVG; cross-tenant negative test; Lighthouse >=90,18,ARTIFACT:apps/web/src/app/cases/case-types/page.tsx;ARTIFACT:apps/web/src/app/cases/case-types/CaseTypesContent.tsx;ARTIFACT:apps/api/src/modules/case/case-types.router.ts;ARTIFACT:packages/validators/src/case-types.ts;EVIDENCE:.specify/sprints/sprint-18/attestations/PG-204/context_ack.json,VALIDATE:pnpm typecheck;VALIDATE:pnpm test --run;VALIDATE:pnpm lint;VALIDATE:pnpm build;GATE:lighthouse-gte-90,180/360/540,,,0,"PG-178:FS,PG-190:FS",
PG-205,Settings,Module Settings - Contact Types (/contacts/(list)/contact-types),Frontend Dev (STOA-Foundation),"PG-178,PG-182",FILE:apps/web/src/components/sidebar/configs/contacts.ts;FILE:apps/web/src/app/contacts/(list)/contact-settings/ContactSettingsContent.tsx;FILE:apps/api/src/modules/contact/contact-automation.ts;FILE:docs/planning/module-settings-playbook.md;FILE:docs/planning/prd-module-settings.md,"Contact types at /contacts/(list)/contact-types (taxonomy: person/organization/vendor/partner, required fields per type, default fields, default labels). MUST follow docs/planning/module-settings-playbook.md: PageHeader+bento grid; canonical EmptyState (entity + phase=passive); system-compliant CTAs; TagsTab via forwardRef; $transaction on all destructive writes; no skipDuplicates; Zod superRefine for duplicate type names; colorToken CHECK constraint; AI defaults FALSE; wire every Boolean toggle in contact-automation.ts OR declare as category-2 follow-up under IFC-310/311/312; include cross-tenant negative test; Lighthouse >=90; verified by: pnpm test",Completed,All 4 validations pass; every toggle has runtime consumer or IFC-* follow-up; EmptyState uses project SVG; cross-tenant negative test; Lighthouse >=90,18,ARTIFACT:apps/web/src/app/contacts/(list)/contact-types/page.tsx;ARTIFACT:apps/web/src/app/contacts/(list)/contact-types/ContactTypesContent.tsx;ARTIFACT:apps/api/src/modules/contact/contact-types.router.ts;ARTIFACT:packages/validators/src/contact-types.ts;EVIDENCE:.specify/sprints/sprint-18/attestations/PG-205/context_ack.json,VALIDATE:pnpm typecheck;VALIDATE:pnpm test --run;VALIDATE:pnpm lint;VALIDATE:pnpm build;GATE:lighthouse-gte-90,180/360/540,,,0,"PG-178:FS,PG-182:FS",
PG-206,Settings,Module Settings - Storage Policies (/documents/(list)/storage-policies),Frontend Dev (STOA-Foundation),"PG-178,PG-186",FILE:apps/web/src/components/sidebar/configs/documents.ts;FILE:apps/web/src/app/documents/(list)/document-settings/DocumentSettingsContent.tsx;FILE:apps/api/src/modules/legal/document-automation.ts;FILE:docs/planning/module-settings-playbook.md;FILE:docs/planning/prd-module-settings.md,"Storage policies at /documents/(list)/storage-policies (per-tenant retention periods by doc type, archival rules, cold storage migration thresholds, legal hold exceptions). MUST follow docs/planning/module-settings-playbook.md: PageHeader+bento grid; canonical EmptyState (entity + phase=passive); system-compliant CTAs; TagsTab via forwardRef; $transaction on all destructive writes; no skipDuplicates; Zod superRefine for duplicate (docType, retentionPeriod) pairs; colorToken CHECK constraint; AI defaults FALSE; wire every Boolean toggle in document-automation.ts OR declare as category-2 follow-up under IFC-310/311/312; include cross-tenant negative test; Lighthouse >=90; verified by: pnpm test",Completed,All 4 validations pass; every toggle has runtime consumer or IFC-* follow-up; EmptyState uses project SVG; cross-tenant negative test; Lighthouse >=90,18,ARTIFACT:apps/web/src/app/documents/(list)/storage-policies/page.tsx;ARTIFACT:apps/web/src/app/documents/(list)/storage-policies/StoragePoliciesContent.tsx;ARTIFACT:apps/api/src/modules/legal/storage-policies.router.ts;ARTIFACT:packages/validators/src/storage-policies.ts;EVIDENCE:.specify/sprints/sprint-18/attestations/PG-206/context_ack.json,VALIDATE:pnpm typecheck;VALIDATE:pnpm test --run;VALIDATE:pnpm lint;VALIDATE:pnpm build;GATE:lighthouse-gte-90,180/360/540,,,0,"PG-178:FS,PG-186:FS",
PG-207,Settings,Module Settings - Email (/email/email-settings),Frontend Dev (STOA-Foundation),"PG-178,PG-182",FILE:apps/web/src/components/sidebar/configs/email.ts;FILE:apps/web/src/app/contacts/(list)/contact-settings/ContactSettingsContent.tsx;FILE:docs/planning/module-settings-playbook.md;FILE:docs/planning/prd-module-settings.md,"Email settings at /email/email-settings (SMTP/IMAP config per tenant, signatures per user/org, tracking pixel on/off, reply-to override, bounce handling rules). Secrets MUST go through server-side tRPC - never in client bundle. MUST follow docs/planning/module-settings-playbook.md: PageHeader+bento grid; canonical EmptyState (entity + phase=passive); system-compliant CTAs; TagsTab via forwardRef; $transaction on all destructive writes; no skipDuplicates; Zod superRefine for duplicate signature names; colorToken CHECK constraint; AI defaults FALSE; wire every Boolean toggle in email automation OR declare as category-2 follow-up under IFC-310/311/312; include cross-tenant negative test; Lighthouse >=90; verified by: pnpm test",Completed,All 4 validations pass; every toggle has runtime consumer or IFC-* follow-up; EmptyState uses project SVG; cross-tenant negative test; Lighthouse >=90,18,ARTIFACT:apps/web/src/app/email/email-settings/page.tsx;ARTIFACT:apps/web/src/app/email/email-settings/EmailSettingsContent.tsx;ARTIFACT:apps/api/src/modules/email/email-settings.router.ts;ARTIFACT:packages/validators/src/email-settings.ts;EVIDENCE:.specify/sprints/sprint-18/attestations/PG-207/context_ack.json,VALIDATE:pnpm typecheck;VALIDATE:pnpm test --run;VALIDATE:pnpm lint;VALIDATE:pnpm build;GATE:lighthouse-gte-90,180/360/540,,,0,"PG-178:FS,PG-182:FS",
PG-208,Settings,Module Settings - Task Automation (/tasks/(list)/automation),Frontend Dev (STOA-Foundation),"PG-178,PG-191",FILE:apps/web/src/components/sidebar/configs/tasks.ts;FILE:apps/web/src/app/tasks/(list)/task-settings/page.tsx;FILE:docs/planning/module-settings-playbook.md;FILE:docs/planning/prd-module-settings.md,"Task automation at /tasks/(list)/automation (rule builder: when X happens create/assign task; trigger types = entity event/schedule/webhook; actions = create task, assign by round-robin, notify). MUST follow docs/planning/module-settings-playbook.md: PageHeader+bento grid; canonical EmptyState (entity + phase=passive); system-compliant CTAs; TagsTab via forwardRef; $transaction on all destructive writes; no skipDuplicates; Zod superRefine for duplicate (trigger, action) pairs; colorToken CHECK constraint; AI defaults FALSE; wire every Boolean toggle in task automation OR declare as category-2 follow-up under IFC-310/311/312; include cross-tenant negative test; Lighthouse >=90; verified by: pnpm test",Completed,All 4 validations pass; every toggle has runtime consumer or IFC-* follow-up; EmptyState uses project SVG; cross-tenant negative test; Lighthouse >=90,18,ARTIFACT:apps/web/src/app/tasks/(list)/automation/page.tsx;ARTIFACT:apps/web/src/app/tasks/(list)/automation/TaskAutomationContent.tsx;ARTIFACT:apps/api/src/modules/task/task-automation.router.ts;ARTIFACT:packages/validators/src/task-automation.ts;EVIDENCE:.specify/sprints/sprint-18/attestations/PG-208/context_ack.json,VALIDATE:pnpm typecheck;VALIDATE:pnpm test --run;VALIDATE:pnpm lint;VALIDATE:pnpm build;GATE:lighthouse-gte-90,180/360/540,,,0,"PG-178:FS,PG-191:FS",
PG-209,Settings,Module Settings - Task Types (/tasks/(list)/task-types),Frontend Dev (STOA-Foundation),"PG-178,PG-191",FILE:apps/web/src/components/sidebar/configs/tasks.ts;FILE:apps/web/src/app/tasks/(list)/task-settings/page.tsx;FILE:docs/planning/module-settings-playbook.md;FILE:docs/planning/prd-module-settings.md,"Task types at /tasks/(list)/task-types (taxonomy: category, default duration, default priority, reminder defaults). MUST follow docs/planning/module-settings-playbook.md: PageHeader+bento grid; canonical EmptyState (entity + phase=passive); system-compliant CTAs; TagsTab via forwardRef; $transaction on all destructive writes; no skipDuplicates; Zod superRefine for duplicate type names; colorToken CHECK constraint; AI defaults FALSE; wire every Boolean toggle in task automation OR declare as category-2 follow-up under IFC-310/311/312; include cross-tenant negative test; Lighthouse >=90; verified by: pnpm test",Completed,All 4 validations pass; every toggle has runtime consumer or IFC-* follow-up; EmptyState uses project SVG; cross-tenant negative test; Lighthouse >=90,18,ARTIFACT:apps/web/src/app/tasks/(list)/task-types/page.tsx;ARTIFACT:apps/web/src/app/tasks/(list)/task-types/TaskTypesContent.tsx;ARTIFACT:apps/api/src/modules/task/task-types.router.ts;ARTIFACT:packages/validators/src/task-types.ts;EVIDENCE:.specify/sprints/sprint-18/attestations/PG-209/context_ack.json,VALIDATE:pnpm typecheck;VALIDATE:pnpm test --run;VALIDATE:pnpm lint;VALIDATE:pnpm build;GATE:lighthouse-gte-90,180/360/540,,,0,"PG-178:FS,PG-191:FS",
